Schedule from MS Project, 2018-03-05 to 2018-05-24, costs in $, A marks actual dates.

## Calendars

- Standard: Mon-Fri 08:00-12:00, 13:00-17:00; Sat-Sun off. Exceptions (off unless hours are given): 2018-03-17 08:00-12:00, 13:00-17:00, 2018-04-07 08:00-12:00, 13:00-17:00, 2018-04-14 08:00-12:00, 13:00-17:00.

## Resources

| Resource | Group | Rate |
| --- | --- | --- |
| Ali | developer | 5 |
| Vahid | developer | 5 |
| MohamadAmin | developer | 5 |

## Schedule

| ID | WBS | Task | Type | Duration | Start | Finish | Predecessors | Complete | Remaining | Total slack | Deadline | Resources | Work | Actual work | Cost | Actual cost |
| --- | --- | --- | --- | --- | --- | --- | --- | --- | --- | --- | --- | --- | --- | --- | --- | --- |
| 1 | 1 | **فاز اول پروژه** |  | 2d | 2018-03-05 A | 2018-03-07 A |  | 100% |  |  | 2018-03-04 |  |  |  |  |  |
| 2 | 1.1 | **تهیه پروپوزال** |  | 0.38d | 2018-03-05 A | 2018-03-05 A |  | 100% |  |  | 2018-03-04 |  |  |  |  |  |
| 3 | 1.1.1 | اهداف و توجیه |  | 1h | 2018-03-05 A | 2018-03-05 A |  | 100% |  |  |  |  |  |  |  |  |
| 4 | 1.1.2 | معرفی و مفاد قرارداد |  | 1h | 2018-03-05 A | 2018-03-05 A |  | 100% |  |  |  |  |  |  |  |  |
| 5 | 1.1.3 | **معرفی سیستم و توضیح تکنولوژی** |  | 0.38d | 2018-03-05 A | 2018-03-05 A |  | 100% |  |  |  |  |  |  |  |  |
| 6 | 1.1.3.1 | تهیه گزینه راه حل‌های تکنولوژی |  | 1h | 2018-03-05 A | 2018-03-05 A |  | 100% |  |  |  |  |  |  |  |  |
| 7 | 1.1.3.2 | امکان سنجی گزینه ها |  | 1h | 2018-03-05 A | 2018-03-05 A | 6 | 100% |  |  |  |  |  |  |  |  |
| 8 | 1.1.3.3 | انتخاب گزینه راه حل نهایی |  | 1h | 2018-03-05 A | 2018-03-05 A | 7 | 100% |  |  |  |  |  |  |  |  |
| 9 | 1.1.4 | **پوشش نیازمندی‌های کارکردی و غیرکارکردی** |  | 0.12d | 2018-03-05 A | 2018-03-05 A |  | 100% |  |  |  |  |  |  |  |  |
| 10 | 1.1.4.1 | نیازمندی‌های کارکردی |  | 1h | 2018-03-05 A | 2018-03-05 A |  | 100% |  |  |  |  |  |  |  |  |
| 11 | 1.1.4.2 | نیازمندی‌های غیرکارکردی |  | 1h | 2018-03-05 A | 2018-03-05 A |  | 100% |  |  |  |  |  |  |  |  |
| 12 | 1.1.5 | برآورد زمانی |  | 1h | 2018-03-05 A | 2018-03-05 A |  | 100% |  |  |  |  |  |  |  |  |
| 13 | 1.1.6 | برآوردمالی |  | 1h | 2018-03-05 A | 2018-03-05 A | 12 | 100% |  |  |  |  |  |  |  |  |
| 14 | 1.1.7 | مراحل اجرای پروژه |  | 1h | 2018-03-05 A | 2018-03-05 A |  | 100% |  |  |  |  |  |  |  |  |
| 15 | 1.1.8 | معرفی اعضای گروه |  | 1h | 2018-03-05 A | 2018-03-05 A |  | 100% |  |  |  |  |  |  |  |  |
| 16 | 1.1.9 | بیان نمرات اضافی |  | 1h | 2018-03-05 A | 2018-03-05 A |  | 100% |  |  |  |  |  |  |  |  |
| 17 | 1.2 | بازخوانی و تصحیح پروپوزال و آماده سازی نسخه نهایی |  | 1d | 2018-03-06 A | 2018-03-06 A | 2 | 100% |  |  | 2018-03-04 |  |  |  |  |  |
| 18 | 1.3 | ارسال نسخه نهایی | milestone | 0d | 2018-03-07 A | 2018-03-07 A | 17 | 100% |  |  | 2018-03-04 |  |  |  |  |  |
| 19 | 2 | **فاز اولِ نوشتن مورد‌های کاربردی و سناریوی تست** |  | 24d | 2018-03-07 A | 2018-04-06 | 1 | 32% | 16.39d | 0d |  |  | 488h | 264h | 2,440 | 1,320 |
| 20 | 2.1 | طراحی wireframe |  | 10d | 2018-03-07 A | 2018-03-19 A | 1 | 100% |  |  | 2018-04-07 | Ali; MohamadAmin; Vahid | 240h | 240h | 1,200 | 1,200 |
| 21 | 2.2 | **موارد کاربردی سامانه آتوریزیشن** |  | 7d | 2018-03-20 A | 2018-03-28 |  | 14% | 6d | 0d | 2018-04-07 |  | 56h | 8h | 280 | 40 |
| 22 | 2.2.1 | طراحی نمودار |  | 1d | 2018-03-20 A | 2018-03-20 A | 20 | 100% |  |  |  | Ali | 8h | 8h | 40 | 40 |
| 23 | 2.2.2 | جدول توضیحات هر مورد کاربردی |  | 4d | 2018-03-21 | 2018-03-26 | 22 |  |  | 0d |  | Ali | 32h |  | 160 |  |
| 24 | 2.2.3 | سناریو تست هر مورد کاربردی |  | 2d | 2018-03-27 | 2018-03-28 | 23 |  |  | 0d |  | Ali | 16h |  | 80 |  |

| ID | WBS | Task | Duration | Start | Finish | Predecessors | Complete | Remaining | Total slack | Free slack | Deadline | Resources | Work | Actual work | Cost | Actual cost |
| --- | --- | --- | --- | --- | --- | --- | --- | --- | --- | --- | --- | --- | --- | --- | --- | --- |
| 25 | 2.3 | **موارد کاربردی سامانه مدیریت** | 7d | 2018-03-20 A | 2018-03-28 |  | 14% | 6d | 5d |  | 2018-04-14 |  | 56h | 8h | 280 | 40 |
| 26 | 2.3.1 | طراحی نمودار | 1d | 2018-03-20 A | 2018-03-20 A | 20 | 100% |  |  |  |  | Vahid | 8h | 8h | 40 | 40 |
| 27 | 2.3.2 | جدول توضیحات هر مورد کاربردی | 4d | 2018-03-21 | 2018-03-26 | 26 |  |  | 5d | 0d |  | Vahid | 32h |  | 160 |  |
| 28 | 2.3.3 | سناریو تست هر مورد کاربردی | 2d | 2018-03-27 | 2018-03-28 | 27 |  |  | 5d | 0d |  | Vahid | 16h |  | 80 |  |
| 29 | 2.4 | **موارد کاربردی سامانه مالی** | 7d | 2018-03-20 A | 2018-03-28 |  | 14% | 6d | 6d |  | 2018-04-14 |  | 56h | 8h | 280 | 40 |
| 30 | 2.4.1 | طراحی نمودار | 1d | 2018-03-20 A | 2018-03-20 A | 20 | 100% |  |  |  |  | MohamadAmin | 8h | 8h | 40 | 40 |
| 31 | 2.4.2 | جدول توضیحات هر مورد کاربردی | 4d | 2018-03-21 | 2018-03-26 | 30 |  |  | 6d | 0d |  | MohamadAmin | 32h |  | 160 |  |
| 32 | 2.4.3 | سناریو تست هر مورد کاربردی | 2d | 2018-03-27 | 2018-03-28 | 31 |  |  | 6d | 0d |  | MohamadAmin | 16h |  | 80 |  |
| 33 | 2.5 | **موارد کاربردی سامانه جریان کار** | 7d | 2018-03-29 | 2018-04-06 |  |  |  | 0d |  | 2018-04-30 |  | 80h |  | 400 |  |
| 34 | 2.5.1 | طراحی نمودار | 2d | 2018-03-29 | 2018-03-30 | 28 |  |  | 5d |  |  | Vahid | 16h |  | 80 |  |
| 35 | 2.5.2 | جدول توضیحات هر مورد کاربردی | 7d | 2018-03-29 | 2018-04-06 | 24 |  |  | 0d |  |  | Ali | 56h |  | 280 |  |
| 36 | 2.5.3 | سناریو تست هر مورد کاربردی | 1d | 2018-03-29 | 2018-03-29 | 32 |  |  | 6d |  |  | MohamadAmin | 8h |  | 40 |  |
| 37 | 3 | **فاز دوم نوشتن مورد‌های کاربردی و سناریو تست** | 2d | 2018-04-07 | 2018-04-09 |  |  |  | 0d |  |  |  | 32h |  | 160 |  |
| 38 | 3.1 | **طراحی سناریو تست سیستمی** | 2d | 2018-04-07 | 2018-04-09 |  |  |  | 0d |  | 2018-06-13 |  | 32h |  | 160 |  |
| 39 | 3.1.1 | تست ارتباط سامانه مالی و جریان کار | 1d | 2018-04-07 | 2018-04-07 | 29, 33, 19 |  |  | 1d |  |  | Ali | 8h |  | 40 |  |
| 40 | 3.1.2 | تست ارتباط سامانه مدیریت و مالی | 1d | 2018-04-07 | 2018-04-07 | 25, 33, 19 |  |  | 0d |  |  | Vahid | 8h |  | 40 |  |
| 41 | 3.1.3 | تست ارتباط سامانه آتوریزیشن و مدیریت | 1d | 2018-04-07 | 2018-04-07 | 21, 25, 19 |  |  | 1d |  |  | MohamadAmin | 8h |  | 40 |  |
| 42 | 3.1.4 | تست ارتباط سامانه آتورزیشن جریان کار | 1d | 2018-04-09 | 2018-04-09 | 21, 33, 19, 40 |  |  | 0d |  |  | Vahid | 8h |  | 40 |  |
| 43 | 4 | **پیاده‌سازی و تحویل ERD** | 33.75d | 2018-04-10 | 2018-05-24 |  |  |  | 0d |  |  |  | 686h |  | 3,430 |  |
| 44 | 4.1 | طراحی پایگاه‌داده | 2d | 2018-04-10 | 2018-04-11 | 37 |  |  | 0d |  | 2018-06-20 | Ali | 16h |  | 80 |  |
| 45 | 4.2 | **آماده‌سازی بستر توسعه** | 0.75d | 2018-04-12 | 2018-04-12 |  |  |  | 0d |  | 2018-06-20 |  | 6h |  | 30 |  |
| 46 | 4.2.1 | طراحی ساختار فایلی پروژه | 3h | 2018-04-12 | 2018-04-12 | 44 |  |  | 0d |  |  | Ali | 3h |  | 15 |  |
| 47 | 4.2.2 | آماده‌سازی بستر git | 1h | 2018-04-12 | 2018-04-12 | 46 |  |  | 0d |  |  | Ali | 1h |  | 5 |  |
| 48 | 4.2.3 | آماده‌سازی بستر Continues Integration | 2h | 2018-04-12 | 2018-04-12 | 47 |  |  | 0d |  |  | Ali | 2h |  | 10 |  |

| ID | WBS | Task | Duration | Start | Finish | Predecessors | Total slack | Free slack | Constraint | Deadline | Resources | Work | Cost |
| --- | --- | --- | --- | --- | --- | --- | --- | --- | --- | --- | --- | --- | --- |
| 49 | 4.3 | **پیاده‌سازی میکرو‌سرویس‌ها** | 28d | 2018-04-12 | 2018-05-21 |  | 0d |  |  | 2018-08-16 |  | 640h | 3,200 |
| 50 | 4.3.1 | **پیاده‌سازی میکروسرویس جریان کار** | 16d | 2018-04-12 | 2018-05-03 |  | 0d |  |  |  |  | 256h | 1,280 |
| 51 | 4.3.1.1 | پیاده‌سازی تست سناریو اصلی | 2d | 2018-04-12 | 2018-04-14 | 44, 45, 42 | 0d |  |  |  | MohamadAmin; Vahid | 32h | 160 |
| 52 | 4.3.1.2 | پیاده‌سازی منطق اصلی | 3d | 2018-04-14 | 2018-04-18 | 51 | 0d |  |  |  | MohamadAmin; Vahid | 48h | 240 |
| 53 | 4.3.1.3 | پیاده‌سازی تست‌ سناریو‌های فرعی | 5d | 2018-04-18 | 2018-04-25 | 52 | 0d |  |  |  | MohamadAmin; Vahid | 80h | 400 |
| 54 | 4.3.1.4 | پیاده‌سازی منطق‌های فرعی | 6d | 2018-04-25 | 2018-05-03 | 53 | 0d |  |  |  | MohamadAmin; Vahid | 96h | 480 |
| 55 | 4.3.2 | **پیاده‌سازی میکروسرویس آتوریزیشن** | 12d | 2018-04-12 | 2018-04-27 |  | 4d |  |  |  |  | 96h | 480 |
| 56 | 4.3.2.1 | پیاده‌سازی تست سناریو اصلی | 1d | 2018-04-12 | 2018-04-13 | 48 | 4d | 0d |  |  | Ali | 8h | 40 |
| 57 | 4.3.2.2 | پیاده‌سازی منطق اصلی | 3d | 2018-04-13 | 2018-04-17 | 56 | 4d | 0d |  |  | Ali | 24h | 120 |
| 58 | 4.3.2.3 | پیاده‌سازی تست‌ سناریو‌های فرعی | 3d | 2018-04-17 | 2018-04-20 | 57 | 4d | 0d |  |  | Ali | 24h | 120 |
| 59 | 4.3.2.4 | پیاده‌سازی منطق‌های فرعی | 5d | 2018-04-20 | 2018-04-27 | 58 | 4d | 0d |  |  | Ali | 40h | 200 |
| 60 | 4.3.3 | **پیاده‌سازی میکروسرویس مدیریت** | 12d | 2018-05-03 | 2018-05-21 |  | 0d |  |  |  |  | 192h | 960 |
| 61 | 4.3.3.1 | پیاده‌سازی تست سناریو اصلی | 1d | 2018-05-03 | 2018-05-04 | 44, 45, 54 | 0d |  |  |  | MohamadAmin | 8h | 40 |
| 62 | 4.3.3.2 | پیاده‌سازی منطق اصلی | 3d | 2018-05-04 | 2018-05-09 | 61 | 0d |  |  |  | MohamadAmin | 24h | 120 |
| 63 | 4.3.3.3 | پیاده‌سازی تست‌ سناریو‌های فرعی | 3d | 2018-05-09 | 2018-05-14 | 62 | 0d |  |  |  | MohamadAmin | 24h | 120 |
| 64 | 4.3.3.4 | پیاده‌سازی منطق‌های فرعی | 5d | 2018-05-14 | 2018-05-21 | 63 | 0d |  |  |  | MohamadAmin | 40h | 200 |
| 65 | 4.3.3.5 | **پیاده‌سازی میکرو‌سرویس مالی** | 12d | 2018-05-03 | 2018-05-21 |  | 0d |  |  |  |  | 96h | 480 |
| 66 | 4.3.3.5.1 | پیاده‌سازی تست سناریو اصلی | 1d | 2018-05-03 | 2018-05-04 | 44, 45, 54 | 0d |  |  |  | Vahid | 8h | 40 |
| 67 | 4.3.3.5.2 | پیاده‌سازی منطق اصلی | 3d | 2018-05-04 | 2018-05-09 | 66 | 0d |  |  |  | Vahid | 24h | 120 |
| 68 | 4.3.3.5.3 | پیاده‌سازی تست‌ سناریو‌های فرعی | 3d | 2018-05-09 | 2018-05-14 | 67 | 0d |  |  |  | Vahid | 24h | 120 |
| 69 | 4.3.3.5.4 | پیاده‌سازی منطق‌های فرعی | 5d | 2018-05-14 | 2018-05-21 | 68 | 0d |  |  |  | Vahid | 40h | 200 |
| 70 | 4.3.4 | **پیاده‌سازی تست‌های سیستمی** | 12d | 2018-04-27 | 2018-05-15 |  | 4d |  |  |  |  | 96h | 480 |
| 71 | 4.3.4.1 | پیاده‌سازی تست ارتباط سامانه مالی و جریان کار | 1d | 2018-04-27 | 2018-04-30 | 44, 45, 59 | 4d | 0d |  |  | Ali | 8h | 40 |
| 72 | 4.3.4.2 | پیاده‌سازی تست ارتباط سامانه مدیریت و مالی | 3d | 2018-04-30 | 2018-05-03 | 71 | 4d | 0d |  |  | Ali | 24h | 120 |
| 73 | 4.3.4.3 | پیاده‌سازی تست ارتباط سامانه آتوریزیشن و مدیریت | 3d | 2018-05-03 | 2018-05-08 | 72 | 4d | 0d |  |  | Ali | 24h | 120 |
| 74 | 4.3.4.4 | پیاده‌سازی تست ارتباط سامانه آتورزیشن جریان کار | 5d | 2018-05-08 | 2018-05-15 | 73 | 4d |  |  |  | Ali | 40h | 200 |
| 75 | 4.4 | deployment و تحویل | 3d | 2018-05-21 | 2018-05-24 | 49 | 0d |  | start no earlier than 2018-04-13 | 2018-08-23 | Ali; MohamadAmin; Vahid | 24h | 120 |
